# Codex_План_Проекта

Schedule from MS Project, 2026-09-24 to 2026-12-16.
План проекта: MVP модуля информационной системы (парсинг технических стандартов > единая БД > интерфейс)
МАДИ, кафедра АСУ

## Calendars

- Стандартный: Mon-Fri 09:00-13:00, 14:00-18:00; Sat-Sun off. Exceptions (off unless hours are given): 2026-11-04 (День народного единства).

## Resources

| Resource | Group |
| --- | --- |
| Тарасов М.К. | Менеджер проекта |
| Деканозов И.М. | Программист-аналитик |
| Каримов Д.Н. | Специалист по данным |
| Симсим А.Б. | Программист-тестировщик |
| Титоренко Д.О. | Фронтенд-разработчик |

## Schedule

| ID | WBS | Task | Type | Duration | Start | Finish | Predecessors | Total slack | Resources |
| --- | --- | --- | --- | --- | --- | --- | --- | --- | --- |
| 1 | 1 | **Инициация проекта** |  | 32h | 2026-09-24 | 2026-09-29 |  | 0d |  |
| 2 | 1.1 | Старт проекта | milestone | 0h | 2026-09-24 | 2026-09-24 |  | 0d |  |
| 3 | 1.2 | Утверждение устава проекта |  | 8h | 2026-09-24 | 2026-09-24 | 2 | 0d | Тарасов М.К. |
| 4 | 1.3 | Формирование команды и распределение ролей |  | 8h | 2026-09-25 | 2026-09-25 | 3 | 0d | Тарасов М.К. |
| 5 | 1.4 | Согласование требований и границ MVP с заказчиком |  | 16h | 2026-09-28 | 2026-09-29 | 4 | 0d | Тарасов М.К.; Деканозов И.М. |
| 6 | 2 | **Анализ и проектирование** |  | 104h | 2026-09-30 | 2026-10-16 |  | 0d |  |
| 7 | 2.1 | Анализ структуры технических стандартов |  | 32h | 2026-09-30 | 2026-10-05 | 5 | 0d | Каримов Д.Н. |
| 8 | 2.2 | Проверка юридических ограничений на использование источников |  | 8h | 2026-10-06 | 2026-10-06 | 7 | 0d | Тарасов М.К. |
| 9 | 2.3 | Определение перечня ключевых полей для извлечения |  | 24h | 2026-10-06 | 2026-10-08 | 7 | 0d | Каримов Д.Н.; Деканозов И.М. |
| 10 | 2.4 | Отбор 10 тестовых стандартов |  | 16h | 2026-10-09 | 2026-10-12 | 8, 9 | 0d | Каримов Д.Н. |
| 11 | 2.5 | Выбор стека (Python, SQL, OCR) и архитектуры решения |  | 16h | 2026-10-09 | 2026-10-12 | 9 | 0d | Деканозов И.М. |
| 12 | 2.6 | Проектирование схемы БД |  | 32h | 2026-10-13 | 2026-10-16 | 10, 11 | 0d | Деканозов И.М.; Каримов Д.Н. |
| 13 | 2.7 | **Проектирование интерфейса** |  | 72h | 2026-09-30 | 2026-10-12 |  | 0d |  |
| 14 | 2.7.1 | Изучение сценариев подбора и аналогов интерфейса |  | 16h | 2026-09-30 | 2026-10-01 | 5 | 0d | Титоренко Д.О. |
| 15 | 2.7.2 | Макеты главного окна и навигации |  | 16h | 2026-10-02 | 2026-10-05 | 14 | 0d | Титоренко Д.О. |
| 16 | 2.7.3 | Макеты просмотра и редактирования записи |  | 16h | 2026-10-06 | 2026-10-07 | 15 | 0d | Титоренко Д.О. |
| 17 | 2.7.4 | Макеты поиска и таблицы результатов |  | 16h | 2026-10-08 | 2026-10-09 | 16 | 0d | Титоренко Д.О. |
| 18 | 2.7.5 | Согласование макетов с заказчиком |  | 8h | 2026-10-12 | 2026-10-12 | 17 | 0d | Титоренко Д.О.; Тарасов М.К. |
| 19 | 2.8 | Подготовка тест-плана и эталонной разметки полей |  | 40h | 2026-10-09 | 2026-10-15 | 9 | 0d | Симсим А.Б. |
| 20 | 2.9 | Проект системы утверждён | milestone | 0h | 2026-10-16 | 2026-10-16 | 12, 18, 9 | 0d |  |
| 21 | 3 | **Разработка БД и каркаса приложения** |  | 40h | 2026-10-19 | 2026-10-23 |  | 0d |  |
| 22 | 3.1 | Создание БД и таблиц по схеме |  | 24h | 2026-10-19 | 2026-10-21 | 20 | 0d | Деканозов И.М. |
| 23 | 3.2 | Настройка подключения к БД и справочников |  | 8h | 2026-10-22 | 2026-10-22 | 22 | 0d | Деканозов И.М. |
| 24 | 3.3 | Каркас приложения: меню и панель навигации |  | 16h | 2026-10-19 | 2026-10-20 | 20 | 0d | Титоренко Д.О. |
| 25 | 3.4 | Базовая вёрстка форм |  | 24h | 2026-10-21 | 2026-10-23 | 24 | 0d | Титоренко Д.О. |

Notes:
- 2: Дата начала по уставу: 24.09.2026
- 3: Устав: цели, границы, риски, команда, приёмка
- 5: Что входит и не входит в MVP (раздел 2 устава)
- 7: Типовые разделы, таблицы, форматы файлов
- 8: Риск из устава: юридические ограничения парсинга
- 9: Цена, качество, модель и др.
- 10: Выборка для приёмки
- 11: Локальный запуск, только бесплатное/open-source ПО
- 12: Схема БД входит в поставки
- 19: Эталон нужен для замера точности ≥ 95%
- 20: Веха

| ID | WBS | Task | Type | Duration | Start | Finish | Predecessors | Total slack | Resources |
| --- | --- | --- | --- | --- | --- | --- | --- | --- | --- |
| 26 | 4 | **Модуль парсинга технических стандартов** |  | 160h | 2026-10-19 | 2026-11-16 |  | 0d |  |
| 27 | 4.1 | Загрузка файлов стандартов и извлечение текста |  | 32h | 2026-10-19 | 2026-10-22 | 20 | 0d | Каримов Д.Н. |
| 28 | 4.2 | Подключение OCR для сканированных документов |  | 32h | 2026-10-23 | 2026-10-28 | 27, 23 | 0d | Деканозов И.М. |
| 29 | 4.3 | Правила извлечения ключевых полей |  | 56h | 2026-10-23 | 2026-11-02 | 27 | 0d | Каримов Д.Н. |
| 30 | 4.4 | Нормализация и валидация извлечённых данных |  | 24h | 2026-11-03 | 2026-11-06 | 29 | 0d | Каримов Д.Н. |
| 31 | 4.5 | Загрузка извлечённых данных в БД |  | 24h | 2026-11-09 | 2026-11-11 | 30, 23 | 0d | Каримов Д.Н. |
| 32 | 4.6 | Обработка ошибок и ручная корректировка результатов парсинга |  | 24h | 2026-11-12 | 2026-11-16 | 31 | 0d | Каримов Д.Н.; Деканозов И.М. |
| 33 | 5 | **Интерфейс просмотра, поиска и редактирования** |  | 144h | 2026-10-26 | 2026-11-19 |  | 0d |  |
| 34 | 5.1 | Просмотр записей |  | 24h | 2026-10-26 | 2026-10-28 | 25 | 0d | Титоренко Д.О. |
| 35 | 5.2 | Форма ручного ввода записи с валидацией |  | 24h | 2026-10-29 | 2026-11-02 | 34 | 0d | Титоренко Д.О. |
| 36 | 5.3 | Редактирование записей |  | 24h | 2026-11-03 | 2026-11-06 | 35 | 0d | Титоренко Д.О. |
| 37 | 5.4 | Удаление записей с подтверждением |  | 8h | 2026-11-09 | 2026-11-09 | 36 | 0d | Титоренко Д.О. |
| 38 | 5.5 | Серверная часть поиска и фильтрации |  | 40h | 2026-10-29 | 2026-11-05 | 28 | 0d | Деканозов И.М. |
| 39 | 5.6 | История изменений записей |  | 24h | 2026-11-06 | 2026-11-10 | 38 | 0d | Деканозов И.М. |
| 40 | 5.7 | Интерфейс быстрого и расширенного поиска |  | 32h | 2026-11-10 | 2026-11-13 | 37, 38 | 0d | Титоренко Д.О. |
| 41 | 5.8 | Таблица результатов подбора |  | 16h | 2026-11-16 | 2026-11-17 | 40 | 0d | Титоренко Д.О. |
| 42 | 5.9 | Сохранение результатов подбора |  | 16h | 2026-11-18 | 2026-11-19 | 41 | 0d | Титоренко Д.О.; Деканозов И.М. |
| 43 | 6 | **Интеграция и тестирование** |  | 104h | 2026-11-20 | 2026-12-08 |  | 0d |  |
| 44 | 6.1 | Сборка всех модулей |  | 16h | 2026-11-20 | 2026-11-23 | 32, 39, 42 | 0d | Деканозов И.М. |
| 45 | 6.2 | Функциональное тестирование (поиск, просмотр, редактирование) |  | 32h | 2026-11-24 | 2026-11-27 | 44 | 0d | Симсим А.Б. |
| 46 | 6.3 | Замер точности извлечения на 10 стандартах |  | 24h | 2026-11-24 | 2026-11-26 | 44 | 0d | Каримов Д.Н. |
| 47 | 6.4 | Исправление ошибок и доработка правил извлечения |  | 32h | 2026-11-30 | 2026-12-03 | 45, 46 | 0d | Деканозов И.М.; Каримов Д.Н.; Титоренко Д.О. |
| 48 | 6.5 | Повторное тестирование и протокол тестирования |  | 24h | 2026-12-04 | 2026-12-08 | 47 | 0d | Симсим А.Б. |
| 49 | 6.6 | MVP собран и протестирован | milestone | 0h | 2026-12-08 | 2026-12-08 | 48 | 0d |  |

Notes:
- 28: 100% äë˙ ďëîőčő ńęŕíîâ íĺ ăŕđŕíňčđóĺňń˙ (óńňŕâ, ď. 2.3)
- 32: Снижает риск потери данных
- 38: Критерии: цена, качество, модель и др.
- 39: Защита от потери данных при ручном вводе
- 46: Критерий приёмки: ≥ 95% по ключевым полям
- 48: Протокол тестирования поставка
- 49: Веха

| ID | WBS | Task | Type | Duration | Start | Finish | Predecessors | Total slack | Resources |
| --- | --- | --- | --- | --- | --- | --- | --- | --- | --- |
| 50 | 7 | **Документирование и сдача** |  | 136h | 2026-11-24 | 2026-12-16 |  | 0d |  |
| 51 | 7.1 | Руководство пользователя |  | 32h | 2026-11-24 | 2026-11-27 | 44 | 0d | Титоренко Д.О. |
| 52 | 7.2 | Руководство разработчика |  | 32h | 2026-11-24 | 2026-11-27 | 44 | 0d | Деканозов И.М. |
| 53 | 7.3 | Подготовка презентации проекта |  | 24h | 2026-12-04 | 2026-12-08 | 47 | 0d | Тарасов М.К. |
| 54 | 7.4 | Подготовка комплекта тестовых данных |  | 16h | 2026-12-09 | 2026-12-10 | 48 | 0d | Симсим А.Б. |
| 55 | 7.5 | Демонстрация MVP преподавателю и заказчику |  | 8h | 2026-12-11 | 2026-12-11 | 48, 51, 52, 53, 54 | 0d | Тарасов М.К.; Деканозов И.М. |
| 56 | 7.6 | Устранение замечаний по итогам демонстрации |  | 16h | 2026-12-14 | 2026-12-15 | 55 | 0d | Деканозов И.М.; Титоренко Д.О. |
| 57 | 7.7 | Приёмка проекта |  | 8h | 2026-12-16 | 2026-12-16 | 56 | 0d | Тарасов М.К. |
| 58 | 7.8 | Завершение проекта | milestone | 0h | 2026-12-16 | 2026-12-16 | 57 | 0d |  |

Notes:
- 51: Поставка
- 52: Поставка
- 53: Поставка
- 54: Поставка
- 55: Приёмка: 10 стандартов, точность ≥ 95%
- 58: Срок по уставу 20.12.2026
